# HRM Detail Plan

Schedule from MS Project, 2011-09-27 to 2012-05-04, status date 2012-03-09, A marks actual dates.

## Calendars

- HRM_hk1.0: Mon off; Tue 08:00-11:00, 13:00-16:00, 19:00-21:00; Wed 13:00-15:30; Thu 08:00-11:00, 13:00-16:00, 19:00-21:00; Fri 13:00-17:00; Sat 08:00-11:00, 13:00-15:30; Sun off.
- HRM_hk2.0: Mon off; Tue-Wed 08:00-11:00, 13:00-16:00, 19:00-21:00; Thu off; Fri-Sat 08:00-11:00, 13:00-16:00, 19:00-21:00; Sun off.

## Resources

| Resource |
| --- |
| Nhung |
| Quyet |
| Nguyen |
| Loc |
| Dang |
| All |
| Tung |
| Tuong |
| Tan |
| 119 |

## Schedule

| ID | WBS | Task | Type | Duration | Start | Finish | Predecessors | Complete | Remaining | Baseline start | Baseline finish | Baseline duration | Baseline 1 start | Baseline 1 finish | Total slack | Constraint | Resources | Work | Actual work |
| --- | --- | --- | --- | --- | --- | --- | --- | --- | --- | --- | --- | --- | --- | --- | --- | --- | --- | --- | --- |
| 1 | 1 | **Human Resource Management** |  | 111.19d? | 2011-09-27 A | 2012-05-04 |  | 69% | 34.34d? | 2011-09-22 | 2012-04-30 | 222d? | 2011-09-26 | 2012-04-30 | 0d |  |  | 7024.85h | 5213.48h |
| 2 | 1.1 | Kick off meeting | milestone | 0d | 2011-09-27 | 2011-09-27 |  |  |  |  |  |  | 2011-09-27 | 2011-09-27 | 111.19d | start no earlier than 2011-09-27 | All |  |  |
| 3 | 1.2 | **Project Management** |  | 60.81d? | 2011-09-27 A | 2012-01-25 A | 2 | 100% |  | 2011-10-01 | 2012-04-17 | 200d? | 2011-09-28 | 2012-04-30 |  |  |  | 265h | 265h |
| 4 | 1.2.1 | **Start Up** |  | 60.81d? | 2011-09-27 A | 2012-01-25 A |  | 100% |  | 2011-09-22 | 2012-04-17 | 209d? | 2011-09-28 | 2011-09-30 |  |  |  | 265h | 265h |
| 5 | 1.2.1.1 | **Research process** |  | 30.81d? | 2011-09-27 A | 2011-11-25 A |  | 100% |  | 2011-10-01 | 2012-03-22 | 174d | 2011-09-28 | 2011-09-29 |  |  |  | 134.5h | 134.5h |
| 6 | 1.2.1.1.1 | Requirement Process |  | 3d? | 2011-09-27 A | 2011-10-01 A |  | 100% |  |  |  |  | 2011-09-28 | 2011-09-29 |  | finish no earlier than 2011-10-01 | Nguyen [50%]; Quyet [50%] | 24h | 24h |
| 7 | 1.2.1.1.2 | Architect process |  | 3d? | 2011-09-27 A | 2011-10-01 A | 6SS | 100% |  |  |  |  | 2011-09-28 | 2011-09-29 |  | finish no earlier than 2011-10-01 | Tuong [50%]; Tan [50%] | 24h | 24h |
| 8 | 1.2.1.1.3 | Detail design process |  | 3d? | 2011-09-27 A | 2011-10-01 A | 6SS | 100% |  |  |  |  | 2011-09-28 | 2011-09-29 |  | finish no earlier than 2011-10-01 | Dang [50%]; Loc [50%] | 24h | 24h |
| 9 | 1.2.1.1.4 | Testing process |  | 3d? | 2011-09-27 A | 2011-10-01 A | 6SS | 100% |  |  |  |  | 2011-09-28 | 2011-09-28 |  | start no earlier than 2011-09-27 | Tung [50%] | 12h | 12h |
| 10 | 1.2.1.1.5 | Risk management |  | 3d? | 2011-09-27 A | 2011-10-01 A | 6SS | 100% |  |  |  |  | 2011-09-28 | 2011-09-28 |  | finish no earlier than 2011-10-01 | Nhung [50%] | 14h | 14h |
| 11 | 1.2.1.1.6 | Measurement management |  | 3d? | 2011-11-16 A | 2011-11-22 A | 10 | 100% |  |  |  |  | 2011-09-28 | 2011-09-28 |  | start no earlier than 2011-11-16 | Nhung | 24h | 24h |
| 12 | 1.2.1.1.7 | Change management |  | 1.56d? | 2011-11-23 A | 2011-11-25 A | 11 | 100% |  |  |  |  | 2011-09-28 | 2011-09-28 |  | start no earlier than 2011-11-23 | Nhung | 12.5h | 12.5h |
| 13 | 1.2.1.2 | **Develop Project Plan** |  | 53.25d? | 2011-10-04 A | 2012-01-17 A |  | 100% |  | 2011-09-22 | 2011-09-26 | 5d | 2011-09-28 | 2011-09-29 |  |  |  | 104h | 104h |
| 14 | 1.2.1.2.1 | Requirement Process |  | 1.81d? | 2011-10-04 A | 2011-10-06 A | 6 | 100% |  |  |  |  | 2011-09-28 | 2011-09-29 |  | finish no earlier than 2011-10-05 | Nguyen [50%] | 7.25h | 7.25h |
| 15 | 1.2.1.2.2 | Architect process |  | 1.81d? | 2011-10-04 A | 2011-10-06 A | 7 | 100% |  |  |  |  | 2011-09-28 | 2011-09-29 |  | finish no earlier than 2011-10-05 | Tuong [50%]; Tan [50%] | 14.5h | 14.5h |
| 16 | 1.2.1.2.3 | Detail design process |  | 1.81d? | 2011-10-04 A | 2011-10-06 A | 8 | 100% |  |  |  |  | 2011-09-28 | 2011-09-29 |  | finish no earlier than 2011-10-05 | Dang [50%]; Loc [50%] | 14.5h | 14.5h |
| 17 | 1.2.1.2.4 | Testing process |  | 1.81d? | 2011-10-04 A | 2011-10-06 A | 9 | 100% |  |  |  |  | 2011-09-28 | 2011-09-28 |  | finish no earlier than 2011-10-05 | Tung [50%] | 7.25h | 7.25h |
| 18 | 1.2.1.2.5 | Risk management |  | 2.5d? | 2011-11-26 A | 2011-12-01 A | 12 | 100% |  |  |  |  | 2011-09-28 | 2011-09-28 |  | start no earlier than 2011-11-26 | Nhung [50%] | 10h | 10h |
| 19 | 1.2.1.2.6 | Measurement management |  | 8d? | 2011-12-22 A | 2012-01-10 A | 18 | 100% |  |  |  |  | 2011-09-28 | 2011-09-28 |  | finish no earlier than 2012-01-10 | Nhung | 42.5h | 42.5h |
| 20 | 1.2.1.2.7 | Change management |  | 1d? | 2012-01-14 A | 2012-01-17 A | 19 | 100% |  |  |  |  | 2011-09-28 | 2011-09-28 |  | finish no earlier than 2012-01-17 | Nhung | 8h | 8h |
| 21 | 1.2.1.3 | Develop Detail Plan |  | 3.31d | 2012-01-18 A | 2012-01-25 A | 20 | 100% |  | 2011-09-22 | 2011-09-24 | 3d | 2011-09-28 | 2011-09-30 |  | finish no earlier than 2012-01-21 | Nhung | 26.5h | 26.5h |
| 22 | 1.3 | **Requirement Analysis** |  | 56.75d? | 2011-09-27 A | 2012-01-17 A | 2 | 100% |  | 2011-10-01 | 2011-11-20 | 51d? | 2011-10-01 | 2011-12-29 |  |  |  | 735.85h | 735.85h |
| 23 | 1.3.1 | Elicitate requirement |  | 2.81d? | 2011-09-27 A | 2011-09-30 A |  | 100% |  | 2011-10-01 | 2011-11-12 | 43d | 2011-10-01 | 2011-12-25 |  | start no earlier than 2011-09-27 | Dang [50%]; Loc [50%]; Nguyen [50%]; Nhung [50%]; Quyet [50%]; Tan [50%]; Tung [50%]; Tuong [50%] | 76h | 76h |
| 24 | 1.3.2 | Analysis requirement |  | 3d? | 2011-10-01 A | 2011-10-07 A | 23 | 100% |  | 2011-11-20 | 2011-11-20 | 0d? | 2011-10-01 | 2011-12-25 |  | finish no earlier than 2011-10-06 | Dang [50%]; Loc [50%]; Nguyen [50%]; Nhung [50%]; Quyet [50%]; Tan [50%]; Tung [50%]; Tuong [50%] | 109.25h | 109.25h |

| ID | WBS | Task | Type | Duration | Start | Finish | Predecessors | Complete | Baseline start | Baseline finish | Baseline duration | Baseline 1 start | Baseline 1 finish | Constraint | Resources | Work | Actual work |
| --- | --- | --- | --- | --- | --- | --- | --- | --- | --- | --- | --- | --- | --- | --- | --- | --- | --- |
| 25 | 1.3.3 | **Develop Concept of Operation** |  | 33.56d? | 2011-10-04 A | 2011-12-08 A |  | 100% | 2011-10-08 | 2011-10-22 | 15d | 2011-10-01 | 2011-11-30 |  |  | 227.35h | 227.35h |
| 26 | 1.3.3.1 | **Document ConsOpt( Draft version)** |  | 22.31d? | 2011-10-04 A | 2011-11-16 A |  | 100% |  |  |  | 2011-10-01 | 2011-10-05 |  |  | 195.3h | 195.3h |
| 27 | 1.3.3.1.1 | Introduction |  | 4.44d? | 2011-10-08 A | 2011-10-18 A | 24 | 100% |  |  |  | 2011-10-01 | 2011-10-01 | start no earlier than 2011-10-07 | Loc [50%] | 17.75h | 17.75h |
| 28 | 1.3.3.1.2 | Current system |  | 4d? | 2011-10-06 A | 2011-10-14 A |  | 100% |  |  |  | 2011-10-01 | 2011-10-01 | finish no earlier than 2011-10-14 | Dang [50%] | 16h | 16h |
| 29 | 1.3.3.1.3 | Reason for improvement |  | 2.5d? | 2011-10-15 A | 2011-10-20 A | 28 | 100% |  |  |  | 2011-10-01 | 2011-10-01 | start no earlier than 2011-10-15 | Dang [50%] | 10h | 10h |
| 30 | 1.3.3.1.4 | **System future** |  | 22.31d? | 2011-10-04 A | 2011-11-16 A |  | 100% |  |  |  | 2011-10-01 | 2011-10-05 |  |  | 149.75h | 149.75h |
| 31 | 1.3.3.1.4.1 | Information Catgegories |  | 3d? | 2011-10-08 A | 2011-10-14 A | 24 | 100% |  |  |  |  |  | start no earlier than 2011-10-07 | Nhung | 24h | 24h |
| 32 | 1.3.3.1.4.2 | Processes |  | 3d? | 2011-10-14 A | 2011-10-16 A | 31 | 100% |  |  |  |  |  |  | Dang [50%] | 12h | 12h |
| 33 | 1.3.3.1.4.3 | Processes: Mô hình phân rã chức năng hồ sơ nhân sự |  | 13.06d? | 2011-10-18 A | 2011-11-16 A | 32 | 100% |  |  |  |  |  | finish no earlier than 2011-11-09 | Nhung | 104.5h | 104.5h |
| 34 | 1.3.3.1.4.4 | Scenario |  | 2.31d? | 2011-10-04 A | 2011-10-07 A | 9 | 100% |  |  |  |  |  | finish no earlier than 2011-10-06 | Tung [50%] | 9.25h | 9.25h |
| 35 | 1.3.3.1.5 | Effect |  | 2.25d? | 2011-10-19 A | 2011-10-22 A | 27 | 100% |  |  |  | 2011-10-01 | 2011-10-01 | finish no earlier than 2011-10-16 | Loc [10%] | 1.8h | 1.8h |
| 36 | 1.3.3.1.6 | Analysis system future | milestone | 0d? | 2011-10-25 A | 2011-10-25 A | 24 | 100% |  |  |  | 2011-10-01 | 2011-10-01 | finish no earlier than 2011-10-25 | Quyet [20%] |  |  |
| 37 | 1.3.3.2 | Review |  | 10.06d? | 2011-11-16 A | 2011-12-08 A | 30 | 100% |  |  |  |  |  | finish no earlier than 2011-10-18 | All [10%] | 8.05h | 8.05h |
| 38 | 1.3.3.3 | Send Concept Operation to customer |  | 0.75d | 2011-11-10 A | 2011-11-10 A |  | 100% |  |  |  | 2011-11-10 | 2011-11-10 | start no earlier than 2011-11-10 | Nhung | 6h | 6h |
| 39 | 1.3.3.4 | **Update ConsOpt** |  | 2.5d? | 2011-11-11 A | 2011-11-16 A |  | 100% |  |  |  | 2011-11-21 | 2011-11-30 |  |  | 18h | 18h |
| 40 | 1.3.3.4.1 | Update Information Catgegories |  | 2.25d? | 2011-11-11 A | 2011-11-16 A | 38 | 100% |  |  |  |  |  |  | Quyet [50%] | 9h | 9h |
| 41 | 1.3.3.4.2 | Update Processes |  | 2.25d? | 2011-11-11 A | 2011-11-16 A | 38 | 100% |  |  |  |  |  |  | Nhung [50%] | 9h | 9h |
| 42 | 1.3.4 | **Develop SRS** |  | 50.44d? | 2011-10-08 A | 2012-01-17 A |  | 100% | 2011-10-23 | 2011-11-20 | 29d | 2011-10-01 | 2011-10-04 |  |  | 323.25h | 323.25h |
| 43 | 1.3.4.1 | **Document Software Requirement Specification (Draft version)** |  | 46.19d? | 2011-10-08 A | 2012-01-07 A |  | 100% |  |  |  | 2011-10-01 | 2011-10-03 |  |  | 179.5h | 179.5h |
| 44 | 1.3.4.1.1 | **Develop use case specification** |  | 10.5d? | 2011-10-08 A | 2011-10-28 A |  | 100% |  |  |  | 2011-10-01 | 2011-10-03 |  |  | 54h | 54h |
| 45 | 1.3.4.1.1.1 | Draw use cases |  | 3d? | 2011-10-21 A | 2011-10-27 A | 29 | 100% |  |  |  |  |  | finish no earlier than 2011-10-23 | Dang | 24h | 24h |
| 46 | 1.3.4.1.1.2 | Draw activity diagram for use cases |  | 2.31d? | 2011-10-25 A | 2011-10-28 A | 35 | 100% |  |  |  |  |  | start no earlier than 2011-10-21 | Loc | 18.5h | 18.5h |
| 47 | 1.3.4.1.1.3 | Descripe use case |  | 1.44d? | 2011-10-08 A | 2011-10-11 A | 34 | 100% |  |  |  |  |  | start no earlier than 2011-10-06 | Tung | 11.5h | 11.5h |
| 48 | 1.3.4.1.2 | Develop interfaces |  | 18d? | 2011-11-29 A | 2012-01-07 A | 41 | 100% |  |  |  | 2011-10-01 | 2011-10-02 | start no earlier than 2011-11-29 | Nhung | 125.5h | 125.5h |
| 49 | 1.3.4.2 | Review |  | 8.31d? | 2011-10-11 A | 2011-10-28 A | 47 | 100% |  |  |  | 2011-10-01 | 2011-10-01 |  | All | 66.5h | 66.5h |
| 50 | 1.3.4.3 | Update SRS |  | 1.44d? | 2011-10-29 A | 2011-11-01 A | 49 | 100% |  |  |  |  |  |  | Loc | 11.5h | 11.5h |
| 51 | 1.3.4.4 | Software Requirement Specification (Final version) |  | 6d? | 2011-11-01 A | 2011-11-06 A | 50 | 100% |  |  |  |  |  | finish no earlier than 2011-11-01 | Dang | 48h | 48h |
| 52 | 1.3.4.5 | Upadate interfaces |  | 4.44d? | 2012-01-07 A | 2012-01-17 A | 48 | 100% |  |  |  |  |  | finish no earlier than 2012-01-17 | Dang [50%] | 17.75h | 17.75h |

| ID | WBS | Task | Type | Duration | Start | Finish | Predecessors | Complete | Remaining | Baseline start | Baseline finish | Baseline duration | Baseline 1 start | Baseline 1 finish | Total slack | Free slack | Constraint | Resources | Work | Actual work |
| --- | --- | --- | --- | --- | --- | --- | --- | --- | --- | --- | --- | --- | --- | --- | --- | --- | --- | --- | --- | --- |
| 53 | 1.4 | **Architect Design Analysis** |  | 46.94d? | 2011-10-08 A | 2012-01-10 A |  | 100% |  | 2011-10-24 | 2011-12-25 | 63d? | 2011-10-15 | 2011-12-29 |  |  |  |  | 576h | 576h |
| 54 | 1.4.1 | **Develop architecture driver document (ADD)** |  | 16d? | 2011-10-08 A | 2011-11-09 A |  | 100% |  | 2011-12-25 | 2011-12-25 | 0d? | 2011-10-15 | 2011-12-25 |  |  |  |  | 144h | 144h |
| 55 | 1.4.1.1 | Discover architecture drivers |  | 9d | 2011-10-08 A | 2011-10-28 A | 24 | 100% |  | 2011-10-24 | 2011-11-03 | 11d | 2011-10-15 | 2011-10-17 |  |  | finish no earlier than 2011-10-23 | Tan [50%]; Tuong [50%] | 72h | 72h |
| 56 | 1.4.1.2 | Document ADD(Draft version) | milestone | 0d | 2011-10-31 A | 2011-10-31 A | 55 | 100% |  | 2011-11-04 | 2011-11-05 | 2d | 2011-10-17 | 2011-10-22 |  |  | finish no earlier than 2011-10-31 | Tan [50%]; Tuong [50%] |  |  |
| 57 | 1.4.1.3 | Review | milestone | 0d | 2011-10-31 A | 2011-10-31 A | 56 | 100% |  | 2011-11-06 | 2011-11-06 | 1d | 2011-10-22 | 2011-10-24 |  |  | finish no earlier than 2011-10-27 | Tan [50%]; Tuong [50%] |  |  |
| 58 | 1.4.1.4 | Document ADD(Final version) |  | 9d? | 2011-11-01 A | 2011-11-09 A | 57 | 100% |  |  |  |  |  |  |  |  | finish no earlier than 2011-11-05 | Tan [50%]; Tuong [50%] | 72h | 72h |
| 59 | 1.4.2 | **Develop architecture design** |  | 30.94d | 2011-11-10 A | 2012-01-10 A |  | 100% |  | 2011-11-13 | 2011-11-13 | 1d | 2011-10-23 | 2011-12-29 |  |  |  |  | 432h | 432h |
| 60 | 1.4.2.1 | Research about new pattern |  | 6.75d | 2011-11-10 A | 2011-11-24 A | 58 | 100% |  | 2011-11-14 | 2011-12-05 | 22d | 2011-10-23 | 2011-11-01 |  |  | finish no earlier than 2011-11-13 | Tan; Tuong | 108h | 108h |
| 61 | 1.4.2.2 | Document AD (Draft version) |  | 3.75d | 2011-11-24 A | 2011-12-01 A | 60 | 100% |  | 2011-12-06 | 2011-12-06 | 1d | 2011-11-02 | 2011-11-16 |  |  | finish no earlier than 2011-11-13 | Tan; Tuong | 60h | 60h |
| 62 | 1.4.2.3 | Review |  | 3.5d | 2011-12-02 A | 2011-12-09 A | 61 | 100% |  | 2011-12-07 | 2011-12-10 | 4d | 2011-11-16 | 2011-11-18 |  |  | finish no earlier than 2011-11-20 | Tan; Tuong | 56h | 56h |
| 63 | 1.4.2.4 | Document AD (Final version) |  | 13.44d | 2011-12-10 A | 2012-01-10 A | 62 | 100% |  | 2011-12-12 | 2011-12-13 | 2d | 2011-12-19 | 2011-12-24 |  |  | finish no earlier than 2011-12-31 | Tan; Tuong | 208h | 208h |
| 64 | 1.5 | **Detail Design Analysis** |  | 37.82d | 2011-12-27 A | 2012-03-10 |  | 99% | 0.38d | 2011-10-16 | 2012-03-04 | 141d? | 2011-12-30 | 2012-02-25 | 27.87d |  |  |  | 586.5h | 580.63h |
| 65 | 1.5.1 | Design Database |  | 7.06d | 2012-01-11 A | 2012-01-26 | 63 | 99% | 0.07d | 2011-12-14 | 2011-12-24 | 11d | 2011-11-17 | 2011-12-29 | 49.62d |  | start no earlier than 2011-11-17 | Tuong | 56.5h | 55.94h |
| 66 | 1.5.2 | **Analysis** |  | 21d | 2011-12-27 A | 2012-02-04 |  | 99% | 0.21d | 2012-03-04 | 2012-03-04 | 0d? | 2011-12-30 | 2012-01-11 | 44.54d |  |  |  | 288h | 285.12h |
| 67 | 1.5.2.1 | Design class diagram |  | 9d | 2011-12-27 A | 2012-01-14 |  | 99% | 0.09d | 2011-12-25 | 2012-01-02 | 9d | 2011-12-30 | 2012-01-07 | 54.95d | 0d | start no earlier than 2011-12-25 | Dang; Loc | 144h | 142.56h |
| 68 | 1.5.2.2 | Design sequence diagram |  | 9d | 2012-01-17 A | 2012-02-04 | 67 | 99% | 0.09d | 2012-01-03 | 2012-01-11 | 9d | 2012-01-03 | 2012-01-11 | 44.54d | 0d | start no earlier than 2012-01-03 | Dang; Loc | 144h | 142.56h |
| 69 | 1.5.3 | **SDS(Draft version)** |  | 15.31d | 2012-02-07 A | 2012-03-07 |  | 99% | 0.15d | 2012-01-12 | 2012-01-20 | 9d | 2012-01-21 | 2012-02-07 | 29.35d |  |  |  | 209h | 206.91h |
| 70 | 1.5.3.1 | Class diagram |  | 9d | 2012-02-07 A | 2012-02-25 | 68 | 99% | 0.09d | 2012-01-21 | 2012-01-29 | 9d | 2012-01-21 | 2012-01-29 | 34.13d | 0d | finish no earlier than 2012-02-01 | Dang; Loc | 144h | 142.56h |
| 71 | 1.5.3.2 | Sequence diagram |  | 4.06d | 2012-02-28 A | 2012-03-07 | 70 | 99% | 0.04d | 2012-01-30 | 2012-02-07 | 9d | 2012-01-30 | 2012-02-07 | 29.35d | 0d | start no earlier than 2012-02-17 | Dang; Loc | 65h | 64.35h |
| 72 | 1.5.4 | Review |  | 1.56d | 2012-03-07 A | 2012-03-09 | 71 | 99% | 0.02d | 2012-02-08 | 2012-02-16 | 9d | 2012-02-08 | 2012-02-16 | 27.87d | 0d | finish no earlier than 2012-02-28 | Dang; Loc | 25h | 24.75h |
| 73 | 1.5.5 | SDS(Final version) |  | 0.5d | 2012-03-09 A | 2012-03-10 | 72 | 99% | 0.01d | 2012-02-17 | 2012-02-25 | 9d | 2012-02-17 | 2012-02-25 | 27.87d |  | finish no earlier than 2012-03-03 | Dang; Loc | 8h | 7.92h |
| 74 | 1.6 | **Programming** |  | 75.69d? | 2011-11-10 A | 2012-04-07 |  | 48% | 39.09d? | 2012-03-04 | 2012-04-04 | 32d? | 2012-02-20 | 2012-03-14 | 13.19d |  |  |  | 3918.5h | 3056h |
| 75 | 1.6.1 | **Training** |  | 58.19d? | 2011-11-10 A | 2012-03-03 A |  | 100% |  | 2012-03-04 | 2012-03-04 | 0d? | 2011-11-28 | 2011-12-29 |  |  |  |  | 3028h | 3028h |
| 76 | 1.6.1.1 | ID generate |  | 49.94d? | 2011-11-10 A | 2012-03-03 A |  | 100% |  | 2012-04-04 | 2012-04-04 | 0d? | 2011-11-28 | 2011-12-15 |  |  | start no earlier than 2011-11-10 | Dang [50%]; Loc; Nguyen; Nhung; Quyet; Tan [50%]; Tung; Tuong | 2773h | 2773h |
| 77 | 1.6.1.2 | Programming: Manage Catalog |  | 64d? | 2011-12-31 A | 2012-03-03 A |  | 100% |  |  |  |  |  |  |  |  | finish no earlier than 2012-03-03 | Tan [50%] | 255h | 255h |

| ID | WBS | Task | Duration | Start | Finish | Predecessors | Complete | Remaining | Total slack | Free slack | Constraint | Calendar | Resources | Work | Actual work |
| --- | --- | --- | --- | --- | --- | --- | --- | --- | --- | --- | --- | --- | --- | --- | --- |
| 78 | 1.6.2 | **Programming** | 22.75d? | 2012-02-29 A | 2012-04-07 |  | 3% | 22.12d? | 15d |  |  | HRM_hk2.0 |  | 716.5h | 28h |
| 79 | 1.6.2.1 | **Programming: Quản lý nhân lực** | 19.25d? | 2012-02-29 A | 2012-04-03 |  | 3% | 18.69d? | 18.5d |  |  | HRM_hk2.0 |  | 705h | 28h |
| 80 | 1.6.2.1.1 | **Programming: Overview Information** | 15.75d? | 2012-03-06 A | 2012-03-31 |  |  | 15.75d? | 19d |  |  | HRM_hk2.0 |  | 182h |  |
| 81 | 1.6.2.1.1.1 | Programming: Employee | 12d? | 2012-03-06 A | 2012-03-31 |  |  | 12d? | 19d |  | finish no earlier than 2012-03-31 | HRM_hk2.0 | Tan [50%] | 49h |  |
| 82 | 1.6.2.1.1.2 | Programming: Staff History | 4d? | 2012-03-23 | 2012-03-31 | 91 |  |  | 19.5d |  | start no earlier than 2012-03-21 | HRM_hk2.0 | Nguyen | 32h |  |
| 83 | 1.6.2.1.1.3 | Programming: Family Relationship Management | 3.5d? | 2012-03-06 A | 2012-03-13 |  |  | 3.5d? | 19d | 0d | finish no earlier than 2012-03-12 | HRM_hk2.0 | Nhung | 28h |  |
| 84 | 1.6.2.1.1.4 | Programming: Supported People Management | 3.5d? | 2012-03-06 A | 2012-03-13 |  |  | 3.5d? | 19.75d | 0d | finish no earlier than 2012-03-12 | HRM_hk2.0 | Nguyen | 28h |  |
| 85 | 1.6.2.1.1.5 | Programming: Certificate Management | 11.25d? | 2012-03-07 | 2012-03-31 | 117 |  |  | 19d |  | finish no earlier than 2012-03-31 | HRM_hk2.0 | Tan [50%] | 45h |  |
| 86 | 1.6.2.1.2 | **Programming: Expand Information** | 19.25d? | 2012-02-29 A | 2012-04-03 |  | 4% | 18.46d? | 18.5d |  |  | HRM_hk2.0 |  | 523h | 28h |
| 87 | 1.6.2.1.2.1 | **Programming: Quản lý đào tạo** | 11d? | 2012-03-13 | 2012-03-31 |  |  |  | 19d |  |  | HRM_hk2.0 |  | 67h |  |
| 88 | 1.6.2.1.2.1.1 | **Programming: Quản lý đào tạo bên ngoài** | 11d? | 2012-03-13 | 2012-03-31 |  |  |  | 19d |  |  | HRM_hk2.0 |  | 51h |  |
| 89 | 1.6.2.1.2.1.1.1 | Programming: Traning Course Information | 4.25d? | 2012-03-13 | 2012-03-23 | 83 |  |  | 19d | 0d | finish no earlier than 2012-03-20 | HRM_hk2.0 | Nhung [50%] | 17h |  |
| 90 | 1.6.2.1.2.1.1.2 | Programming: Training Result Information | 4.25d? | 2012-03-23 | 2012-03-31 | 100 |  |  | 19.25d |  | finish no earlier than 2012-03-28 | HRM_hk2.0 | Quyet | 34h |  |
| 91 | 1.6.2.1.2.1.2 | Programming: Quản lý đào tạo nội bộ | 4d? | 2012-03-13 | 2012-03-21 | 84 |  |  | 19.75d | 1d | finish no earlier than 2012-03-19 | HRM_hk2.0 | Nguyen [50%] | 16h |  |
| 92 | 1.6.2.1.2.2 | **Programming: Quản lý quá trình công tác** | 5.75d? | 2012-03-23 | 2012-03-31 |  |  |  | 19d |  |  | HRM_hk2.0 |  | 64h |  |
| 93 | 1.6.2.1.2.2.1 | Programming: Task Management | 4.25d? | 2012-03-23 | 2012-03-31 | 89 |  |  | 19d |  | finish no earlier than 2012-03-28 | HRM_hk2.0 | Nhung | 34h |  |
| 94 | 1.6.2.1.2.2.2 | Programming: Appoint Management | 3.75d? | 2012-03-23 | 2012-03-30 | 101 |  |  | 20d |  | start no earlier than 2012-03-21 | HRM_hk2.0 | Loc | 30h |  |
| 95 | 1.6.2.1.2.3 | **Programming: Hoạt động khoa học - Công nghệ** | 9.75d? | 2012-03-06 A | 2012-03-21 |  |  | 9.75d? | 25d |  |  | HRM_hk2.0 |  | 132h |  |
| 96 | 1.6.2.1.2.3.1 | Programming: Subject Management | 3.5d? | 2012-03-06 A | 2012-03-13 |  |  | 3.5d? | 19.25d | 0d | start no earlier than 2012-03-06 | HRM_hk2.0 | Dang | 28h |  |
| 97 | 1.6.2.1.2.3.2 | Programming: Article Management | 3.5d? | 2012-03-06 A | 2012-03-13 |  |  | 3.5d? | 19.25d | 0d | start no earlier than 2012-03-06 | HRM_hk2.0 | Quyet | 28h |  |
| 98 | 1.6.2.1.2.3.3 | Programming: Syllabus Management | 3.5d? | 2012-03-06 A | 2012-03-13 |  |  | 3.5d? | 20d | 0d | start no earlier than 2012-03-06 | HRM_hk2.0 | Loc | 28h |  |
| 99 | 1.6.2.1.2.3.4 | Programming: Product Management | 4d? | 2012-03-13 | 2012-03-21 | 97 |  |  | 25d |  | finish no earlier than 2012-03-19 | HRM_hk2.0 | Quyet [50%] | 16h |  |
| 100 | 1.6.2.1.2.3.5 | Programming: Master Thesis Guideline | 4d? | 2012-03-13 | 2012-03-21 | 97 |  |  | 19.5d | 1d | finish no earlier than 2012-03-19 | HRM_hk2.0 | Quyet [50%] | 16h |  |
| 101 | 1.6.2.1.2.3.6 | Programming: Science Research Guideline Of Student | 4d? | 2012-03-13 | 2012-03-21 | 98 |  |  | 20d | 1d | finish no earlier than 2012-03-19 | HRM_hk2.0 | Loc [50%] | 16h |  |

| ID | WBS | Task | Type | Duration | Start | Finish | Predecessors | Complete | Remaining | Total slack | Free slack | Constraint | Calendar | Resources | Work | Actual work |
| --- | --- | --- | --- | --- | --- | --- | --- | --- | --- | --- | --- | --- | --- | --- | --- | --- |
| 102 | 1.6.2.1.2.4 | **Programming: Khen thưởng - Kỷ luật - Danh hiệu thi đua** |  | 6d? | 2012-03-13 | 2012-03-23 |  |  |  | 19.5d |  |  | HRM_hk2.0 |  | 48h |  |
| 103 | 1.6.2.1.2.4.1 | Programming: RewardManagement |  | 4d? | 2012-03-14 | 2012-03-23 | 113 |  |  | 18.75d | 0d | finish no earlier than 2012-03-19 | HRM_hk2.0 | Tuong [50%] | 16h |  |
| 104 | 1.6.2.1.2.4.2 | Programming: Penalty Management |  | 4d? | 2012-03-14 | 2012-03-23 | 113 |  |  | 24.25d |  | finish no earlier than 2012-03-19 | HRM_hk2.0 | Tuong [50%] | 16h |  |
| 105 | 1.6.2.1.2.4.3 | Programming: Awarded Title Management |  | 4d? | 2012-03-13 | 2012-03-21 | 84 |  |  | 25d |  | finish no earlier than 2012-03-19 | HRM_hk2.0 | Nguyen [50%] | 16h |  |
| 106 | 1.6.2.1.2.5 | **Programming: Quản lý tập sự/Thử việc** |  | 5.75d? | 2012-03-13 | 2012-03-23 |  |  |  | 24.5d |  |  | HRM_hk2.0 |  | 34h |  |
| 107 | 1.6.2.1.2.5.1 | Programming: Lecturer Probation Management |  | 4.25d? | 2012-03-13 | 2012-03-23 | 83 |  |  | 24.5d |  | finish no earlier than 2012-03-20 | HRM_hk2.0 | Nhung [50%] | 17h |  |
| 108 | 1.6.2.1.2.5.2 | Programming: Staff Internship Management |  | 4.25d? | 2012-03-13 | 2012-03-23 | 98 |  |  | 24.5d |  | finish no earlier than 2012-03-20 | HRM_hk2.0 | Loc [50%] | 17h |  |
| 109 | 1.6.2.1.2.6 | Programming: Income Management |  | 4.25d? | 2012-03-23 | 2012-03-31 | 111 |  |  | 19.25d |  | finish no earlier than 2012-03-28 | HRM_hk2.0 | Dang | 34h |  |
| 110 | 1.6.2.1.2.7 | Programming: Professor Position Management |  | 4.25d? | 2012-03-23 | 2012-04-03 | 103 |  |  | 18.5d |  | start no earlier than 2012-03-21 | HRM_hk2.0 | Tuong | 34h |  |
| 111 | 1.6.2.1.2.8 | Programming: Facilitate Management |  | 4d? | 2012-03-13 | 2012-03-21 | 96 |  |  | 19.5d | 1d | finish no earlier than 2012-03-19 | HRM_hk2.0 | Dang | 32h |  |
| 112 | 1.6.2.1.2.9 | **Programming: Quản lý công tác Đoàn Thể** |  | 8.25d? | 2012-02-29 A | 2012-03-14 |  | 36% | 5.29d? | 18.5d |  |  | HRM_hk2.0 |  | 78h | 28h |
| 113 | 1.6.2.1.2.9.1 | Programming: Communist Party Management |  | 6.25d? | 2012-02-29 | 2012-03-14 |  |  |  | 18.5d | 0d | start no earlier than 2012-02-29 | HRM_hk2.0 | Tuong | 50h |  |
| 114 | 1.6.2.1.2.9.2 | Programming: Union Management |  | 1.5d? | 2012-03-06 A | 2012-03-07 A |  | 100% |  |  |  | start no earlier than 2012-03-06 | HRM_hk2.0 | Tung | 12h | 12h |
| 115 | 1.6.2.1.2.9.3 | Programming: Trade Union Management |  | 2d? | 2012-03-08 A | 2012-03-11 A | 114 | 100% |  |  |  | finish no earlier than 2012-03-19 | HRM_hk2.0 | Tung | 16h | 16h |
| 116 | 1.6.2.2 | **Programming: Quản trị hệ thống** |  | 2.44d? | 2012-03-02 | 2012-03-06 |  |  |  | 19d |  |  | HRM_hk2.0 |  | 11.5h |  |
| 117 | 1.6.2.2.1 | Programming: Employee Code Setting |  | 1.94d? | 2012-03-02 | 2012-03-06 |  |  |  | 19d | 0.25d | finish no earlier than 2012-03-06 | HRM_hk2.0 | Tan | 11.5h |  |
| 118 | 1.6.2.3 | PROGRAMMING: Report |  | 4.25d? | 2012-03-31 | 2012-04-07 |  |  |  | 15d |  | finish no earlier than 2012-04-07 | HRM_hk2.0 |  |  |  |
| 119 | 1.6.3 | Conduct Unit testing |  | 1.25d? | 2012-03-31 | 2012-04-03 |  |  |  | 0d |  | finish no earlier than 2012-04-03 | HRM_hk2.0 | Dang; Loc; Nguyen; Nhung; Quyet; Tan; Tung; Tuong | 78h |  |
| 120 | 1.6.4 | Intergration |  | 1.5d? | 2012-04-04 | 2012-04-06 | 119 |  |  | 0d |  | finish no earlier than 2012-04-06 | HRM_hk2.0 | Dang; Loc; Nguyen; Nhung; Quyet; Tan; Tung; Tuong | 96h |  |
| 121 | 1.7 | **Testing** |  | 21.81d? | 2012-03-09 | 2012-04-17 |  |  |  | 10.44d |  |  | HRM_hk2.0 |  | 353h |  |
| 122 | 1.7.1 | **Design test case** |  | 21.81d? | 2012-03-09 | 2012-04-17 |  |  |  | 10.44d |  |  | HRM_hk2.0 |  | 177h |  |
| 123 | 1.7.1.1 | Acceptance test case |  | 4d? | 2012-03-09 | 2012-03-18 |  |  |  | 10.44d | 0d | finish no earlier than 2012-03-18 | HRM_hk2.0 | Tung | 32h |  |
| 124 | 1.7.1.2 | System test case |  | 10.62d? | 2012-03-20 | 2012-04-13 | 123 |  |  | 10.44d | 0d | finish no earlier than 2012-03-14 | HRM_hk2.0 | Tung [50%] | 42.5h |  |
| 125 | 1.7.1.3 | Integration test case |  | 1.69d? | 2012-04-13 | 2012-04-17 | 124 |  |  | 10.44d | 0d | finish no earlier than 2012-04-01 | HRM_hk2.0 | Dang; Loc; Nguyen; Nhung; Quyet; Tan; Tung; Tuong | 102.5h |  |
| 126 | 1.7.1.4 | Unit test case | milestone | 0d? | 2012-04-17 | 2012-04-17 | 125 |  |  | 10.44d |  | finish no earlier than 2012-03-29 | HRM_hk2.0 | Dang; Loc; Nguyen; Nhung; Quyet; Tan; Tung; Tuong |  |  |

| ID | WBS | Task | Duration | Start | Finish | Predecessors | Total slack | Constraint | Calendar | Resources | Work |
| --- | --- | --- | --- | --- | --- | --- | --- | --- | --- | --- | --- |
| 127 | 1.7.2 | **Conduct test case** | 3.5d? | 2012-04-07 | 2012-04-13 |  | 0d |  | HRM_hk2.0 |  | 176h |
| 128 | 1.7.2.1 | Integration test case | 1.25d? | 2012-04-07 | 2012-04-10 | 120 | 0d | finish no earlier than 2012-04-08 | HRM_hk2.0 | Dang; Loc; Nguyen; Nhung; Quyet; Tan; Tung; Tuong | 80h |
| 129 | 1.7.2.2 | System test case | 0.75d? | 2012-04-10 | 2012-04-11 | 128 | 0d | finish no earlier than 2012-03-06 | HRM_hk2.0 | Dang; Loc; Nguyen; Nhung; Quyet; Tan; Tung; Tuong | 48h |
| 130 | 1.7.2.3 | Acceptance test case | 0.75d? | 2012-04-11 | 2012-04-13 | 129 | 0d | finish no earlier than 2012-03-06 | HRM_hk2.0 | Dang; Loc; Nguyen; Nhung; Quyet; Tan; Tung; Tuong | 48h |
| 131 | 1.8 | Rework | 4.25d? | 2012-04-13 | 2012-04-24 | 130 | 0d | finish no earlier than 2012-04-20 | HRM_hk2.0 | Dang; Loc; Nguyen; Nhung; Quyet; Tan; Tung; Tuong | 270h |
| 132 | 1.9 | Deployment | 1.31d? | 2012-04-24 | 2012-04-27 | 131 | 0d | finish no earlier than 2012-03-07 | HRM_hk2.0 | Dang; Loc; Nguyen; Nhung; Quyet; Tan; Tung; Tuong | 84h |
| 133 | 1.10 | Deliver to customer | 2.94d? | 2012-04-27 | 2012-05-02 | 132 | 0d | finish no earlier than 2012-04-30 | HRM_hk2.0 | Dang; Loc; Nguyen; Nhung; Quyet; Tan; Tung; Tuong | 188h |
| 134 | 1.11 | Maintaining | 0.75d? | 2012-05-04 | 2012-05-04 | 133 | 0d | finish no earlier than 2012-03-06 | HRM_hk2.0 | Dang; Loc; Nguyen; Nhung; Quyet; Tan; Tung; Tuong | 48h |
